# 项目管理系统

Schedule from MS Project, 2019-09-03 to 2019-11-14, 16 hours a day, costs in ¥, A marks actual dates.

## Calendars

- 软件项目日历: Mon-Sun 08:00-24:00. Exceptions (off unless hours are given): 2019-10-01 to 2019-10-07 (国庆节).

## Resources

| Resource | Rate |
| --- | --- |
| 邹 | 35 |
| 利 | 46.88 |
| 李 | 39.06 |
| 张 | 37.5 |
| 吴 | 39.06 |
| 全体成员 |  |
| 曾 | 20.31 |

## Schedule

| ID | WBS | Task | Type | Duration | Start | Finish | Predecessors | Complete | Remaining | Total slack | Free slack | Resources | Work | Actual work | Cost | Actual cost | 参与人 | 负责人 |
| --- | --- | --- | --- | --- | --- | --- | --- | --- | --- | --- | --- | --- | --- | --- | --- | --- | --- | --- |
| 1 | 1 | **项目管理系统** |  | 63d | 2019-09-03 A | 2019-11-12 |  | 65% | 22.24d | 2d |  |  | 5248h | 3760h | 201,965 | 146,881.25 |  |  |
| 2 | 1.1 | **启动阶段** |  | 4d | 2019-09-03 A | 2019-09-07 A |  | 100% |  |  |  |  | 80h | 80h |  |  |  |  |
| 3 | 1.1.1 | 组建团队 |  | 1d | 2019-09-03 A | 2019-09-04 A |  | 100% |  |  |  | 全体成员 | 16h | 16h |  |  | 全体成员 | 利俊安 |
| 4 | 1.1.2 | 选举项目经理 |  | 1d | 2019-09-03 A | 2019-09-04 A | 3FF | 100% |  |  |  | 全体成员 | 16h | 16h |  |  | 全体成员 | 利俊安 |
| 5 | 1.1.3 | 确定项目主题 |  | 1d | 2019-09-04 A | 2019-09-05 A | 3 | 100% |  |  |  | 全体成员 | 16h | 16h |  |  | 全体成员 | 利俊安 |
| 6 | 1.1.4 | 确定项目章程 |  | 1d | 2019-09-05 A | 2019-09-06 A | 5 | 100% |  |  |  | 全体成员 | 16h | 16h |  |  | 全体成员 | 利俊安 |
| 7 | 1.1.5 | 启动项目 |  | 1d | 2019-09-06 A | 2019-09-07 A | 6 | 100% |  |  |  | 全体成员 | 16h | 16h |  |  | 全体成员 | 利俊安 |
| 8 | 1.2 | **计划阶段** |  | 9d | 2019-09-07 A | 2019-09-16 A | 2 | 100% |  |  |  |  | 176h | 176h | 5,000 | 5,000 |  |  |
| 9 | 1.2.1 | 召开团队计划会议 |  | 1d | 2019-09-07 A | 2019-09-08 A |  | 100% |  |  |  | 全体成员 | 16h | 16h |  |  | 全体成员 | 利俊安 |
| 10 | 1.2.2 | 准备范围说明书 |  | 2d | 2019-09-07 A | 2019-09-09 A |  | 100% |  |  |  | 李 | 32h | 32h | 1,250 | 1,250 | 利俊安 | 利俊安 |
| 11 | 1.2.3 | 准备WBS |  | 3d | 2019-09-07 A | 2019-09-10 A |  | 100% |  |  |  | 利 | 48h | 48h | 2,250 | 2,250 | 利俊安、李光耀 | 利俊安 |
| 12 | 1.2.4 | 制定计划文档 |  | 2d | 2019-09-11 A | 2019-09-13 A | 11 | 100% |  |  |  | 利 | 32h | 32h | 1,500 | 1,500 | 利俊安 | 利俊安 |
| 13 | 1.2.5 | 评审计划文档 |  | 1d | 2019-09-13 A | 2019-09-14 A | 12 | 100% |  |  |  | 全体成员 | 16h | 16h |  |  | 利俊安 | 利俊安 |
| 14 | 1.2.6 | 风险识别和讨论 |  | 2d | 2019-09-14 A | 2019-09-16 A | 13 | 100% |  |  |  | 全体成员 | 32h | 32h |  |  | 利俊安 | 利俊安 |
| 15 | 1.3 | 项目正式确立 | milestone | 0d | 2019-09-16 A | 2019-09-16 A | 14 | 100% |  |  |  |  |  |  |  |  |  |  |
| 16 | 1.4 | **执行阶段** |  | 55d | 2019-09-07 A | 2019-11-08 | 2 | 64% | 19.54d | 2d | 0d |  | 4800h | 3504h | 188,465 | 141,881.25 |  |  |
| 17 | 1.4.1 | **前期学习** |  | 34d | 2019-09-07 A | 2019-10-18 |  | 91% | 3.05d | 14d |  |  | 1360h | 1304h | 54,115 | 51,927.5 |  |  |
| 18 | 1.4.1.1 | 项目管理知识学习 |  | 4d | 2019-09-07 A | 2019-09-11 A |  | 100% |  |  |  | 利; 李 | 128h | 128h | 5,500 | 5,500 | 利俊安、李光耀 | 李光耀 |
| 19 | 1.4.1.2 | Angular学习 |  | 14d | 2019-09-07 A | 2019-09-21 A |  | 100% |  |  |  | 利; 邹; 张 | 672h | 672h | 26,740 | 26,740 | 利俊安、邹博韬、张景维 | 利俊安 |
| 20 | 1.4.1.3 | Django学习 |  | 14d | 2019-09-07 A | 2019-09-21 A |  | 100% |  |  |  | 李; 吴 | 448h | 448h | 17,500 | 17,500 | 李光耀、吴宁 | 吴宁 |
| 21 | 1.4.1.4 | Channels学习 |  | 7d | 2019-10-11 A | 2019-10-18 |  | 50% | 3.5d | 14d | 4d | 李 | 112h | 56h | 4,375 | 2,187.5 | 李光耀、吴宁 | 吴宁 |
| 22 | 1.4.2 | **需求分析** |  | 14d | 2019-09-16 A | 2019-09-30 A | 18, 15 | 100% |  |  |  |  | 592h | 592h | 25,055 | 25,055 |  |  |
| 23 | 1.4.2.1 | 功能性需求分析 |  | 3d | 2019-09-16 A | 2019-09-19 A |  | 100% |  |  |  | 利; 李 | 96h | 96h | 4,125 | 4,125 | 利俊安、李光耀 | 李光耀 |
| 24 | 1.4.2.2 | 非功能性需求分析 |  | 1d | 2019-09-16 A | 2019-09-17 A |  | 100% |  |  |  | 利 | 16h | 16h | 750 | 750 | 利俊安 | 利俊安 |
| 25 | 1.4.2.3 | 用例设计 |  | 5d | 2019-09-19 A | 2019-09-24 A | 23 | 100% |  |  |  | 利; 李 | 160h | 160h | 6,875 | 6,875 | 利俊安、李光耀 | 利俊安 |

| ID | WBS | Task | Duration | Start | Finish | Predecessors | Complete | Remaining | Total slack | Free slack | Resources | Work | Actual work | Cost | Actual cost | 参与人 | 负责人 |
| --- | --- | --- | --- | --- | --- | --- | --- | --- | --- | --- | --- | --- | --- | --- | --- | --- | --- |
| 26 | 1.4.2.4 | **前端原型设计** | 6d | 2019-09-24 A | 2019-09-30 A |  | 100% |  |  |  |  | 224h | 224h | 9,180 | 9,180 | 利俊安、李光耀、张景维 | 利俊安 |
| 27 | 1.4.2.4.1 | 登陆页面原型设计 | 1d | 2019-09-24 A | 2019-09-25 A | 25 | 100% |  |  |  | 利 | 16h | 16h | 750 | 750 | 利俊安、李光耀、张景维 | 利俊安 |
| 28 | 1.4.2.4.2 | 主页面原型设计 | 1d | 2019-09-25 A | 2019-09-26 A | 27 | 100% |  |  |  | 利 | 16h | 16h | 750 | 750 | 利俊安、李光耀、张景维 | 利俊安 |
| 29 | 1.4.2.4.3 | 个人页原型设计 | 2d | 2019-09-24 A | 2019-09-26 A | 25 | 100% |  |  |  | 张 | 32h | 32h | 1,200 | 1,200 | 利俊安、李光耀、张景维 | 利俊安 |
| 30 | 1.4.2.4.4 | 项目页原型设计 | 4d | 2019-09-26 A | 2019-09-30 A | 28 | 100% |  |  |  | 利 | 64h | 64h | 3,000 | 3,000 | 利俊安、李光耀、张景维 | 利俊安 |
| 31 | 1.4.2.4.5 | 聊天页原型设计 | 2d | 2019-09-26 A | 2019-09-28 A | 29 | 100% |  |  |  | 张 | 32h | 32h | 1,200 | 1,200 | 利俊安、李光耀、张景维 | 利俊安 |
| 32 | 1.4.2.4.6 | 好友页原型设计 | 3d | 2019-09-25 A | 2019-09-28 A | 25 | 100% |  |  |  | 邹 | 48h | 48h | 1,680 | 1,680 | 利俊安、李光耀、张景维 | 利俊安 |
| 33 | 1.4.2.4.7 | 通知页原型设计 | 1d | 2019-09-28 A | 2019-09-29 A | 32, 31 | 100% |  |  |  | 张 | 16h | 16h | 600 | 600 | 利俊安、李光耀、张景维 | 利俊安 |
| 34 | 1.4.2.5 | 编写需求文档 | 3d | 2019-09-24 A | 2019-09-27 A | 25 | 100% |  |  |  | 利; 李 | 96h | 96h | 4,125 | 4,125 | 利俊安、李光耀 | 利俊安 |
| 35 | 1.4.3 | 需求评审 | 1d | 2019-09-30 A | 2019-10-01 A | 22 | 100% |  |  |  | 全体成员 | 16h | 16h |  |  | 全体成员 | 吴宁 |
| 36 | 1.4.4 | **概要设计** | 9d | 2019-10-08 A | 2019-10-17 A | 35 | 100% |  |  |  |  | 288h | 288h | 12,750 | 12,750 |  |  |
| 37 | 1.4.4.1 | 系统架构设计 | 3d | 2019-10-08 A | 2019-10-11 A |  | 100% |  |  |  | 利 | 48h | 48h | 2,250 | 2,250 | 利俊安 | 利俊安 |
| 38 | 1.4.4.2 | 后台模块设计 | 2d | 2019-10-08 A | 2019-10-10 A |  | 100% |  |  |  | 利 | 32h | 32h | 1,500 | 1,500 | 利俊安 | 利俊安 |
| 39 | 1.4.4.3 | 数据模型设计 | 3d | 2019-10-10 A | 2019-10-13 A | 38 | 100% |  |  |  | 利; 李; 吴 | 144h | 144h | 6,000 | 6,000 | 利俊安、李光耀、吴宁 | 利俊安 |
| 40 | 1.4.4.4 | 数据库设计 | 4d | 2019-10-13 A | 2019-10-17 A | 39 | 100% |  |  |  | 利 | 64h | 64h | 3,000 | 3,000 | 利俊安、李光耀、吴宁 | 利俊安 |
| 41 | 1.4.5 | 概要设计评审 | 1d | 2019-10-17 A | 2019-10-18 A | 40 | 100% |  |  |  | 全体成员 | 16h | 16h |  |  | 全体成员 | 利俊安 |
| 42 | 1.4.6 | **详细设计** | 19d | 2019-10-08 A | 2019-10-27 |  | 88% | 2.31d | 14d |  |  | 624h | 552h | 24,905 | 21,530 |  |  |
| 43 | 1.4.6.1 | **前后端接口设计** | 8d | 2019-10-08 A | 2019-10-16 |  | 59% | 3.27d | 25d |  |  | 176h | 104h | 7,500 | 4,125 | 利俊安、吴宁 | 利俊安 |
| 44 | 1.4.6.1.1 | 用户模块接口 | 2d | 2019-10-08 A | 2019-10-10 A | 35 | 100% |  |  |  | 吴 | 32h | 32h | 1,250 | 1,250 | 利俊安、吴宁 | 利俊安 |
| 45 | 1.4.6.1.2 | 项目模块接口 | 2d | 2019-10-10 A | 2019-10-12 A | 44 | 100% |  |  |  | 吴 | 32h | 32h | 1,250 | 1,250 | 利俊安、吴宁 | 利俊安 |
| 46 | 1.4.6.1.3 | 任务模块接口 | 2d | 2019-10-12 A | 2019-10-14 A | 45 | 100% |  |  |  | 吴 | 32h | 32h | 1,250 | 1,250 | 利俊安、吴宁 | 利俊安 |
| 47 | 1.4.6.1.4 | 聊天模块接口 | 3d | 2019-10-08 | 2019-10-11 | 35 |  |  | 3.5d | 3d | 利 | 48h |  | 2,250 |  | 利俊安、吴宁 | 利俊安 |
| 48 | 1.4.6.1.5 | 接口评审 | 2d | 2019-10-14 A | 2019-10-16 | 46, 47 | 25% | 1.5d | 25d |  | 利 | 32h | 8h | 1,500 | 375 | 利俊安、吴宁 | 利俊安 |
| 49 | 1.4.6.2 | **对象模型设计** | 2d | 2019-10-17 A | 2019-10-19 A |  | 100% |  |  |  |  | 80h | 80h | 3,250 | 3,250 | 利俊安 | 利俊安 |
| 50 | 1.4.6.2.1 | 前端对象模型 | 1d | 2019-10-17 A | 2019-10-18 A | 48SS+3d | 100% |  |  |  | 利 | 16h | 16h | 750 | 750 | 利俊安 | 利俊安 |
| 51 | 1.4.6.2.2 | 后台对象模型 | 2d | 2019-10-17 A | 2019-10-19 A | 48SS+3d | 100% |  |  |  | 吴; 李 | 64h | 64h | 2,500 | 2,500 | 利俊安 | 利俊安 |

| ID | WBS | Task | Type | Duration | Start | Finish | Predecessors | Complete | Remaining | Total slack | Resources | Work | Actual work | Cost | Actual cost | 参与人 | 负责人 |
| --- | --- | --- | --- | --- | --- | --- | --- | --- | --- | --- | --- | --- | --- | --- | --- | --- | --- |
| 52 | 1.4.6.3 | **用例实现设计** |  | 7d | 2019-10-19 A | 2019-10-26 A |  | 100% |  |  |  | 352h | 352h | 13,405 | 13,405 | 利俊安、李光耀 | 利俊安 |
| 53 | 1.4.6.3.1 | **用户模块用例实现** |  | 4d | 2019-10-19 A | 2019-10-23 A |  | 100% |  |  |  | 112h | 112h | 3,685 | 3,685 | 利俊安、李光耀 | 利俊安 |
| 54 | 1.4.6.3.1.1 | 用例 1 2 3（前端） |  | 2d | 2019-10-19 A | 2019-10-21 A | 50, 51 | 100% |  |  | 曾 | 32h | 32h | 650 | 650 | 利俊安、李光耀 | 利俊安 |
| 55 | 1.4.6.3.1.2 | 用例 4 5（前端） |  | 1d | 2019-10-19 A | 2019-10-20 A | 50, 51 | 100% |  |  | 张 | 16h | 16h | 600 | 600 | 利俊安、李光耀 | 利俊安 |
| 56 | 1.4.6.3.1.3 | 用例 1~5（后端） |  | 2d | 2019-10-21 A | 2019-10-23 A | 54, 55, 58 | 100% |  |  | 吴 | 32h | 32h | 1,250 | 1,250 | 利俊安、李光耀 | 利俊安 |
| 57 | 1.4.6.3.1.4 | 用例 6 7（前端） |  | 1d | 2019-10-19 A | 2019-10-20 A | 50, 51 | 100% |  |  | 邹 | 16h | 16h | 560 | 560 | 利俊安、李光耀 | 利俊安 |
| 58 | 1.4.6.3.1.5 | 用例 6 7（后端） |  | 1d | 2019-10-20 A | 2019-10-21 A | 57 | 100% |  |  | 吴 | 16h | 16h | 625 | 625 | 利俊安、李光耀 | 利俊安 |
| 59 | 1.4.6.3.2 | **项目模块用例实现** |  | 4d | 2019-10-19 A | 2019-10-23 A |  | 100% |  |  |  | 64h | 64h | 2,620 | 2,620 | 利俊安、李光耀 | 利俊安 |
| 60 | 1.4.6.3.2.1 | 用例 1~6 9 |  | 1d | 2019-10-19 A | 2019-10-20 A | 50, 51 | 100% |  |  | 利 | 16h | 16h | 750 | 750 | 利俊安、李光耀 | 利俊安 |
| 61 | 1.4.6.3.2.2 | 用例 7 8 10（后端） |  | 1d | 2019-10-20 A | 2019-10-21 A | 60 | 100% |  |  | 利 | 16h | 16h | 750 | 750 | 利俊安、李光耀 | 利俊安 |
| 62 | 1.4.6.3.2.3 | 用例 7 8 10（前端） |  | 2d | 2019-10-21 A | 2019-10-23 A | 61 | 100% |  |  | 邹 | 32h | 32h | 1,120 | 1,120 | 利俊安、李光耀 | 利俊安 |
| 63 | 1.4.6.3.3 | **任务模块用例实现** |  | 6d | 2019-10-19 A | 2019-10-25 A |  | 100% |  |  |  | 112h | 112h | 4,500 | 4,500 | 利俊安、李光耀 | 利俊安 |
| 64 | 1.4.6.3.3.1 | 用例 1~6 |  | 6d | 2019-10-19 A | 2019-10-25 A | 50, 51 | 100% |  |  | 李 | 96h | 96h | 3,750 | 3,750 | 利俊安、李光耀 | 利俊安 |
| 65 | 1.4.6.3.3.2 | 用例 7 8 |  | 1d | 2019-10-21 A | 2019-10-22 A | 61 | 100% |  |  | 利 | 16h | 16h | 750 | 750 | 利俊安、李光耀 | 利俊安 |
| 66 | 1.4.6.3.4 | **聊天模块用例实现** |  | 3d | 2019-10-19 A | 2019-10-22 A |  | 100% |  |  |  | 48h | 48h | 1,850 | 1,850 | 利俊安、李光耀 | 利俊安 |
| 67 | 1.4.6.3.4.1 | 用例 1~3（后端） |  | 2d | 2019-10-19 A | 2019-10-21 A | 50, 51 | 100% |  |  | 李 | 32h | 32h | 1,250 | 1,250 | 利俊安、李光耀 | 利俊安 |
| 68 | 1.4.6.3.4.2 | 用例 1~3（前端） |  | 1d | 2019-10-21 A | 2019-10-22 A | 55, 67 | 100% |  |  | 张 | 16h | 16h | 600 | 600 | 利俊安、李光耀 | 利俊安 |
| 69 | 1.4.6.3.5 | 用例实现评审 |  | 1d | 2019-10-25 A | 2019-10-26 A | 53, 59, 63, 66 | 100% |  |  | 利 | 16h | 16h | 750 | 750 | 利俊安、李光耀 | 利俊安 |
| 70 | 1.4.6.4 | 编写详细设计文档 |  | 1d | 2019-10-26 A | 2019-10-27 A | 69 | 100% |  |  | 利 | 16h | 16h | 750 | 750 | 利俊安、李光耀 | 利俊安 |
| 71 | 1.4.7 | 详细设计评审 |  | 1d | 2019-10-27 A | 2019-10-28 A | 70 | 100% |  |  | 全体成员 | 16h | 16h |  |  | 全体成员 | 利俊安 |
| 72 | 1.4.8 | 完成系统设计 | milestone | 0d | 2019-10-28 | 2019-10-28 | 71 |  |  | 13d |  |  |  |  |  |  |  |
| 73 | 1.4.9 | **编码开发** |  | 24d | 2019-10-12 A | 2019-11-05 |  | 41% | 14.07d | 5d |  | 1792h | 720h | 68,790 | 30,618.75 |  |  |
| 74 | 1.4.9.1 | **前端开发** |  | 21d | 2019-10-12 A | 2019-11-02 |  | 49% | 10.62d | 8d |  | 944h | 456h | 40,430 | 19,087.5 |  |  |
| 75 | 1.4.9.1.1 | **前端组件开发** |  | 18d | 2019-10-12 A | 2019-10-30 |  | 84% | 2.92d | 11d |  | 448h | 356h | 19,070 | 14,900 | 利俊安、邹博韬、张景维 | 利俊安 |
| 76 | 1.4.9.1.1.1 | 登陆界面组件 |  | 1d | 2019-10-12 A | 2019-10-13 A |  | 100% |  |  | 利 | 16h | 16h | 750 | 750 | 利俊安、邹博韬、张景维 | 利俊安 |
| 77 | 1.4.9.1.1.2 | 个人界面组件 |  | 1d | 2019-10-12 A | 2019-10-13 A |  | 100% |  |  | 张 | 16h | 16h | 600 | 600 | 利俊安、邹博韬、张景维 | 利俊安 |
| 78 | 1.4.9.1.1.3 | 好友界面组件 |  | 4d | 2019-10-12 A | 2019-10-16 A |  | 100% |  |  | 邹 | 64h | 64h | 2,240 | 2,240 | 利俊安、邹博韬、张景维 | 利俊安 |

Notes:
- 54: 登陆注册功能
- 55: 用户修改功能
- 56: 用户基本功能
- 57: 好友功能
- 58: 好友功能
- 60: 项目基本功能
- 61: 项目通知功能
- 62: 项目通知功能
- 64: 任务基本功能
- 65: 任务修改功能
- 67: 聊天基本功能
- 68: 聊天基本功能

| ID | WBS | Task | Type | Duration | Start | Finish | Predecessors | Complete | Remaining | Total slack | Free slack | Resources | Work | Actual work | Cost | Actual cost | 参与人 | 负责人 |
| --- | --- | --- | --- | --- | --- | --- | --- | --- | --- | --- | --- | --- | --- | --- | --- | --- | --- | --- |
| 79 | 1.4.9.1.1.4 | **项目界面组件** |  | 8d | 2019-10-22 A | 2019-10-30 | 65 | 69% | 2.5d | 11d |  | 利 | 256h | 176h | 12,000 | 8,250 | 利俊安、邹博韬、张景维 | 利俊安 |
| 80 | 1.4.9.1.1.4.1 | 项目详情 |  | 1d | 2019-10-22 A | 2019-10-23 A | 65 | 100% |  |  |  | 利 | 16h | 16h | 750 | 750 | 利俊安、邹博韬、张景维 | 利俊安 |
| 81 | 1.4.9.1.1.4.2 | 修改项目 |  | 1d | 2019-10-23 A | 2019-10-24 A | 80 | 100% |  |  |  | 利 | 16h | 16h | 750 | 750 | 利俊安、邹博韬、张景维 | 利俊安 |
| 82 | 1.4.9.1.1.4.3 | 成员视图 |  | 2d | 2019-10-24 A | 2019-10-26 A | 81 | 100% |  |  |  | 利 | 32h | 32h | 1,500 | 1,500 | 利俊安、邹博韬、张景维 | 利俊安 |
| 83 | 1.4.9.1.1.4.4 | 任务视图 |  | 2d | 2019-10-26 A | 2019-10-28 | 82 | 75% | 0.5d | 11d | 0d | 利 | 32h | 24h | 1,500 | 1,125 | 利俊安、邹博韬、张景维 | 利俊安 |
| 84 | 1.4.9.1.1.4.5 | 时间视图 |  | 2d | 2019-10-28 | 2019-10-30 | 83 |  |  | 11d |  | 利 | 32h |  | 1,500 |  | 利俊安、邹博韬、张景维 | 利俊安 |
| 85 | 1.4.9.1.1.5 | 通知界面组件 |  | 3d | 2019-10-16 A | 2019-10-19 | 78 | 75% | 0.75d | 22d |  | 邹 | 48h | 36h | 1,680 | 1,260 | 利俊安、邹博韬、张景维 | 利俊安 |
| 86 | 1.4.9.1.1.6 | 聊天界面组件 |  | 3d | 2019-10-13 A | 2019-10-16 A | 77 | 100% |  |  |  | 张 | 48h | 48h | 1,800 | 1,800 | 利俊安、邹博韬、张景维 | 利俊安 |
| 87 | 1.4.9.1.2 | **前端逻辑开发** |  | 9d | 2019-10-22 A | 2019-10-31 |  | 21% | 7.11d | 2d |  |  | 448h | 100h | 19,110 | 4,187.5 | 利俊安、邹博韬、张景维 | 利俊安 |
| 88 | 1.4.9.1.2.1 | 登录界面逻辑 |  | 1d | 2019-10-23 A | 2019-10-24 | 53 | 50% | 0.5d | 1d | 0d | 利 | 16h | 8h | 750 | 375 | 利俊安、邹博韬、张景维 | 利俊安 |
| 89 | 1.4.9.1.2.2 | 个人界面逻辑 |  | 2d | 2019-10-23 A | 2019-10-25 | 53 | 38% | 1.25d | 8d | 6d | 张 | 32h | 12h | 1,200 | 450 | 利俊安、邹博韬、张景维 | 利俊安 |
| 90 | 1.4.9.1.2.3 | 好友界面逻辑 |  | 3d | 2019-10-23 A | 2019-10-26 | 53 | 17% | 2.5d | 0.75d | 0d | 邹 | 48h | 8h | 1,680 | 280 | 利俊安、邹博韬、张景维 | 利俊安 |
| 91 | 1.4.9.1.2.4 | **项目界面逻辑** |  | 6d | 2019-10-25 A | 2019-10-31 | 63, 88, 59 | 7% | 5.57d | 2d | 0d | 利 | 208h | 28h | 9,750 | 1,312.5 | 利俊安、邹博韬、张景维 | 利俊安 |
| 92 | 1.4.9.1.2.4.1 | 项目详情 |  | 1d | 2019-10-25 A | 2019-10-26 | 63, 88, 59 | 50% | 0.5d | 7d | 0d | 利 | 16h | 8h | 750 | 375 | 利俊安、邹博韬、张景维 | 利俊安 |
| 93 | 1.4.9.1.2.4.2 | 修改项目 |  | 1d | 2019-10-25 | 2019-10-26 | 92SS |  |  | 2d | 0d | 利 | 16h |  | 750 |  | 利俊安、邹博韬、张景维 | 利俊安 |
| 94 | 1.4.9.1.2.4.3 | 成员视图 |  | 2d | 2019-10-26 | 2019-10-28 | 93 |  |  | 2d | 0d | 利 | 32h |  | 1,500 |  | 利俊安、邹博韬、张景维 | 利俊安 |
| 95 | 1.4.9.1.2.4.4 | 任务视图 |  | 2d | 2019-10-28 | 2019-10-30 | 94 |  |  | 2d | 0d | 利 | 32h |  | 1,500 |  | 利俊安、邹博韬、张景维 | 利俊安 |
| 96 | 1.4.9.1.2.4.5 | 时间视图 |  | 1d | 2019-10-30 | 2019-10-31 | 95 |  |  | 2d |  | 利 | 16h |  | 750 |  | 利俊安、邹博韬、张景维 | 利俊安 |
| 97 | 1.4.9.1.2.5 | 通知界面逻辑 |  | 3d | 2019-10-26 A | 2019-10-29 | 59, 90 | 25% | 2.25d | 4d | 2d | 邹 | 48h | 12h | 1,680 | 420 | 利俊安、邹博韬、张景维 | 利俊安 |
| 98 | 1.4.9.1.2.6 | 聊天界面逻辑 |  | 3d | 2019-10-22 A | 2019-10-25 | 66 | 33% | 2d | 8d | 6d | 张; 利 | 96h | 32h | 4,050 | 1,350 | 利俊安、邹博韬、张景维 | 利俊安 |
| 99 | 1.4.9.1.3 | **前端页面开发** |  | 9d | 2019-10-24 | 2019-11-02 |  |  |  | 2d |  |  | 48h |  | 2,250 |  | 利俊安、邹博韬、张景维 | 利俊安 |
| 100 | 1.4.9.1.3.1 | 登录页面 |  | 1d | 2019-10-24 | 2019-10-25 | 88 |  |  | 9.5d | 7.5d | 利 | 16h |  | 750 |  | 利俊安、邹博韬、张景维 | 利俊安 |
| 101 | 1.4.9.1.3.2 | 主页面 |  | 2d | 2019-10-31 | 2019-11-02 | 89, 90, 91, 97, 98 |  |  | 2d | 0d | 利 | 32h |  | 1,500 |  | 利俊安、邹博韬、张景维 | 利俊安 |
| 102 | 1.4.9.2 | 前端单元测试 |  | 16d | 2019-10-19 | 2019-11-04 | 100FF+2d, 101FF+2d |  |  | 2d | 0d | 曾 | 256h |  | 5,200 |  | 邹博韬、张景维、曾声云 | 曾声云 |
| 103 | 1.4.9.3 | 完成前端开发 | milestone | 0d | 2019-11-04 | 2019-11-04 | 102 |  |  | 6d |  |  |  |  |  |  |  |  |

| ID | WBS | Task | Type | Duration | Start | Finish | Predecessors | Complete | Remaining | Total slack | Free slack | Constraint | Resources | Work | Actual work | Cost | Actual cost | 参与人 | 负责人 |
| --- | --- | --- | --- | --- | --- | --- | --- | --- | --- | --- | --- | --- | --- | --- | --- | --- | --- | --- | --- |
| 104 | 1.4.9.4 | **后台开发** |  | 10d | 2019-10-19 A | 2019-10-29 |  | 75% | 2.5d | 12d |  |  |  | 384h | 264h | 16,625 | 11,531.25 |  |  |
| 105 | 1.4.9.4.1 | 后台模型开发 |  | 3d | 2019-10-19 A | 2019-10-22 | 51 | 75% | 0.75d | 2.5d | 0d |  | 利; 吴 | 96h | 72h | 4,125 | 3,093.75 | 利俊安、吴宁 | 利俊安 |
| 106 | 1.4.9.4.2 | **后台逻辑开发** |  | 6d | 2019-10-22 A | 2019-10-28 |  | 72% | 1.67d | 13d |  |  |  | 208h | 128h | 9,250 | 5,812.5 | 利俊安、李光耀、吴宁 | 利俊安 |
| 107 | 1.4.9.4.2.1 | 用户模块逻辑 |  | 2d | 2019-10-23 A | 2019-10-25 | 105, 53 | 75% | 0.5d | 16d |  |  | 利; 吴 | 64h | 48h | 2,750 | 2,062.5 | 利俊安、李光耀、吴宁 | 利俊安 |
| 108 | 1.4.9.4.2.2 | 项目模块逻辑 |  | 2d | 2019-10-25 A | 2019-10-27 A | 107, 59 | 100% |  |  |  |  | 利 | 32h | 32h | 1,500 | 1,500 | 利俊安、李光耀、吴宁 | 利俊安 |
| 109 | 1.4.9.4.2.3 | 任务模块逻辑 |  | 3d | 2019-10-25 A | 2019-10-28 A | 107, 63 | 100% |  |  |  |  | 利 | 48h | 48h | 2,250 | 2,250 | 利俊安、李光耀、吴宁 | 利俊安 |
| 110 | 1.4.9.4.2.4 | 聊天模块逻辑 |  | 2d | 2019-10-22 | 2019-10-24 | 21, 105, 66 |  |  | 10d | 0d |  | 利; 李 | 64h |  | 2,750 |  | 利俊安、李光耀、吴宁 | 利俊安 |
| 111 | 1.4.9.4.3 | **后台接口开发** |  | 5d | 2019-10-24 A | 2019-10-29 |  | 80% | 1d | 6d |  |  |  | 80h | 64h | 3,250 | 2,625 | 利俊安、李光耀、吴宁 | 利俊安 |
| 112 | 1.4.9.4.3.1 | 用户模块接口 |  | 1d | 2019-10-25 A | 2019-10-26 A | 107 | 100% |  |  |  |  | 吴 | 16h | 16h | 625 | 625 | 利俊安、李光耀、吴宁 | 利俊安 |
| 113 | 1.4.9.4.3.2 | 项目模块接口 |  | 2d | 2019-10-27 A | 2019-10-29 A | 108 | 100% |  |  |  |  | 吴 | 32h | 32h | 1,250 | 1,250 | 利俊安、李光耀、吴宁 | 利俊安 |
| 114 | 1.4.9.4.3.3 | 任务模块接口 |  | 1d | 2019-10-28 A | 2019-10-29 A | 109 | 100% |  |  |  |  | 利 | 16h | 16h | 750 | 750 | 利俊安、李光耀、吴宁 | 利俊安 |
| 115 | 1.4.9.4.3.4 | 聊天模块接口 |  | 1d | 2019-10-24 | 2019-10-25 | 110 |  |  | 10d | 4d |  | 李 | 16h |  | 625 |  | 利俊安、李光耀、吴宁 | 利俊安 |
| 116 | 1.4.9.5 | 后台单元测试 |  | 5d | 2019-10-26 | 2019-10-31 | 112FF+2d, 113FF+2d, 114FF+2d, 115FF+2d |  |  | 6d | 0d |  | 吴; 曾 | 160h |  | 4,750 |  | 利俊安、李光耀、吴宁 | 吴宁 |
| 117 | 1.4.9.6 | 完成后台开发 | milestone | 0d | 2019-10-31 | 2019-10-31 | 116 |  |  | 10d |  |  |  |  |  |  |  |  |  |
| 118 | 1.4.9.7 | 前后端对接 |  | 1d | 2019-11-04 | 2019-11-05 | 102, 116 |  |  | 2d | 0d |  | 邹; 张; 吴 | 48h |  | 1,785 |  | 邹博韬、张景维、吴宁 | 吴宁 |
| 119 | 1.4.10 | **系统测试** |  | 3d | 2019-11-05 | 2019-11-08 |  |  |  | 2d |  |  |  | 96h |  | 2,850 |  |  |  |
| 120 | 1.4.10.1 | 黑盒测试 |  | 3d | 2019-11-05 | 2019-11-08 | 118 |  |  | 2d | 0d |  | 曾; 吴 | 96h |  | 2,850 |  | 曾声云、吴宁 | 吴宁 |
| 121 | 1.4.11 | 完成代码开发 | milestone | 0d | 2019-11-08 | 2019-11-08 | 120 |  |  | 2d |  |  |  |  |  |  |  |  |  |
| 122 | 1.4.12 | **监督控制阶段** |  | 36d | 2019-09-08 A | 2019-10-21 |  |  | 36d | 0d |  |  |  |  |  |  |  |  |  |
| 123 | 1.4.12.1 | **进度报告** |  | 36d | 2019-09-08 A | 2019-10-21 |  |  | 36d | 0d |  |  |  |  |  |  |  |  |  |
| 124 | 1.4.12.1.1 | 学习进度报告 1 | manual | 1d | 2019-09-08 A | 2019-09-09 |  |  | 1d |  |  | start no earlier than 2019-09-08 |  |  |  |  |  | 全体成员 | 利俊安 |
| 125 | 1.4.12.1.2 | 学习进度报告 2 | manual | 1d | 2019-09-12 A | 2019-09-13 |  |  | 1d |  |  | start no earlier than 2019-09-12 |  |  |  |  |  | 全体成员 | 利俊安 |
| 126 | 1.4.12.1.3 | 学习进度报告 3 | manual | 1d | 2019-09-14 A | 2019-09-15 |  |  | 1d |  |  | start no earlier than 2019-09-14 |  |  |  |  |  | 全体成员 | 利俊安 |
| 127 | 1.4.12.1.4 | 学习进度报告 4 | manual | 1d | 2019-09-19 A | 2019-09-20 |  |  | 1d |  |  | start no earlier than 2019-09-19 |  |  |  |  |  | 全体成员 | 利俊安 |
| 128 | 1.4.12.1.5 | 设计进度报告 1 | manual | 1d | 2019-09-21 A | 2019-09-22 |  |  | 1d |  |  | start no earlier than 2019-09-21 |  |  |  |  |  | 全体成员 | 利俊安 |
| 129 | 1.4.12.1.6 | 设计进度报告 2 | manual | 1d | 2019-09-24 A | 2019-09-25 |  |  | 1d |  |  | start no earlier than 2019-09-24 |  |  |  |  |  | 全体成员 | 利俊安 |
| 130 | 1.4.12.1.7 | 设计进度报告 3 | manual | 1d | 2019-09-27 A | 2019-09-28 |  |  | 1d |  |  | start no earlier than 2019-09-27 |  |  |  |  |  | 全体成员 | 利俊安 |
| 131 | 1.4.12.1.8 | 开发进度报告 1 | manual | 1d | 2019-09-30 A | 2019-10-01 |  |  | 1d |  |  | start no earlier than 2019-09-30 |  |  |  |  |  | 全体成员 | 利俊安 |
| 132 | 1.4.12.1.9 | 开发进度报告 2 | manual | 1d | 2019-10-03 A | 2019-10-04 |  |  | 1d |  |  | start no earlier than 2019-10-03 |  |  |  |  |  | 全体成员 | 利俊安 |
| 133 | 1.4.12.1.10 | 开发进度报告 3 | manual | 1d | 2019-10-05 A | 2019-10-06 |  |  | 1d |  |  | start no earlier than 2019-10-05 |  |  |  |  |  | 全体成员 | 利俊安 |
| 134 | 1.4.12.1.11 | 开发进度报告 4 | manual | 1d | 2019-10-10 A | 2019-10-11 |  |  | 1d |  |  | start no earlier than 2019-10-10 |  |  |  |  |  | 全体成员 | 利俊安 |
| 135 | 1.4.12.1.12 | 开发进度报告 5 | manual | 1d | 2019-10-14 A | 2019-10-15 |  |  | 1d |  |  | start no earlier than 2019-10-14 |  |  |  |  |  | 全体成员 | 利俊安 |
| 136 | 1.4.12.1.13 | 测试进度报告 1 | manual | 1d | 2019-10-16 A | 2019-10-17 |  |  | 1d |  |  | start no earlier than 2019-10-16 |  |  |  |  |  | 全体成员 | 利俊安 |
| 137 | 1.4.12.1.14 | 测试进度报告 2 | manual | 1d | 2019-10-18 A | 2019-10-19 |  |  | 1d |  |  | start no earlier than 2019-10-18 |  |  |  |  |  | 全体成员 | 利俊安 |
| 138 | 1.4.12.1.15 | 测试进度报告 3 | manual | 1d | 2019-10-20 A | 2019-10-21 |  |  | 1d |  |  | start no earlier than 2019-10-20 |  |  |  |  |  | 全体成员 | 利俊安 |

| ID | WBS | Task | Type | Duration | Start | Finish | Predecessors | Remaining | Total slack | Constraint | Resources | Work | Cost | 参与人 | 负责人 |
| --- | --- | --- | --- | --- | --- | --- | --- | --- | --- | --- | --- | --- | --- | --- | --- |
| 139 | 1.4.12.2 | **例会** |  | 18d | 2019-09-09 A | 2019-09-27 |  | 18d | 0d |  |  |  |  |  |  |
| 140 | 1.4.12.2.1 | 需求分析会议 | manual | 1d | 2019-09-09 A | 2019-09-10 |  | 1d |  | start no earlier than 2019-09-09 |  |  |  | 全体成员 | 利俊安 |
| 141 | 1.4.12.2.2 | 数据模型设计会议 | manual | 1d | 2019-09-15 A | 2019-09-16 |  | 1d |  | start no earlier than 2019-09-15 |  |  |  | 利俊安、李光耀、吴宁 | 利俊安 |
| 142 | 1.4.12.2.3 | 原型设计会议 | manual | 1d | 2019-09-19 A | 2019-09-20 |  | 1d |  | start no earlier than 2019-09-19 |  |  |  | 利俊安、李光耀、张景维 | 利俊安 |
| 143 | 1.4.12.2.4 | 组件设计会议 | manual | 1d | 2019-09-22 A | 2019-09-23 |  | 1d |  | start no earlier than 2019-09-22 |  |  |  | 利俊安、张景维、邹博韬 | 利俊安 |
| 144 | 1.4.12.2.5 | 开发培训会议 | manual | 1d | 2019-09-26 A | 2019-09-27 |  | 1d |  | start no earlier than 2019-09-26 |  |  |  | 全体成员 | 利俊安 |
| 145 | 1.5 | **收尾阶段** |  | 4d | 2019-11-08 | 2019-11-12 | 16 |  | 2d |  |  | 192h | 8,500 |  |  |
| 146 | 1.5.1 | 编写用户手册 |  | 4d | 2019-11-08 | 2019-11-12 |  |  | 2d |  | 利; 李 | 128h | 5,500 | 利俊安、李光耀 | 利俊安 |
| 147 | 1.5.2 | 准备交付资料 |  | 4d | 2019-11-08 | 2019-11-12 |  |  | 2d |  | 利 | 64h | 3,000 | 利俊安 | 利俊安 |
| 148 | 2 | **其他** |  | 51d | 2019-09-17 A | 2019-11-14 |  | 51d | 0d |  |  |  |  |  |  |
| 149 | 2.1 | 国庆放假 | manual | 1d | 2019-10-01 A | 2019-10-07 |  | 1d |  | start no earlier than 2019-10-01 |  |  |  |  |  |
| 150 | 2.2 | 开题汇报 | manual | 2d | 2019-09-17 A | 2019-09-19 |  | 2d |  |  |  |  |  |  |  |
| 151 | 2.3 | 阶段检查 | manual | 2d | 2019-09-24 A | 2019-09-26 |  | 2d |  |  |  |  |  |  |  |
| 152 | 2.4 | 阶段检查 | manual | 2d | 2019-10-08 A | 2019-10-10 |  | 2d |  |  |  |  |  |  |  |
| 153 | 2.5 | 阶段检查 | manual | 2d | 2019-10-15 A | 2019-10-17 |  | 2d |  |  |  |  |  |  |  |
| 154 | 2.6 | 阶段检查 | manual | 2d | 2019-10-22 A | 2019-10-24 |  | 2d |  |  |  |  |  |  |  |
| 155 | 2.7 | 阶段检查 | manual | 2d | 2019-10-29 A | 2019-10-31 |  | 2d |  |  |  |  |  |  |  |
| 156 | 2.8 | 结题汇报 | manual | 2d | 2019-11-05 A | 2019-11-07 |  | 2d |  |  |  |  |  |  |  |
| 157 | 2.9 | 结题汇报 |  | 2d | 2019-11-12 A | 2019-11-14 |  | 2d | 0d |  |  |  |  |  |  |

Notes:
- 149: 国庆放假，时间自由分配
