# 项目管理系统

Schedule from MS Project, 2019-09-03 to 2019-11-26, 16 hours a day, costs in ¥, A marks actual dates.

## Calendars

- 软件项目日历: Mon-Sun 08:00-24:00. Exceptions (off unless hours are given): 2019-10-01 to 2019-10-07 (国庆节).

## Resources

| Resource | Rate |
| --- | --- |
| 邹 | 35 |
| 利 | 46.88 |
| 李 | 39.06 |
| 张 | 37.5 |
| 吴 | 39.06 |
| 全体成员 |  |
| 曾 | 20.31 |

## Schedule

| ID | WBS | Task | Type | Duration | Start | Finish | Predecessors | Complete | Remaining | Total slack | Free slack | Constraint | Resources | Work | Actual work | Cost | Actual cost | 参与人 | 负责人 |
| --- | --- | --- | --- | --- | --- | --- | --- | --- | --- | --- | --- | --- | --- | --- | --- | --- | --- | --- | --- |
| 1 | 1 | **项目管理系统** |  | 77d | 2019-09-03 A | 2019-11-26 |  | 77% | 17.58d | 0d |  |  |  | 5072h | 4352h | 198,520 | 167,271.25 |  |  |
| 2 | 1.1 | **启动阶段** |  | 4d | 2019-09-03 A | 2019-09-07 A |  | 100% |  |  |  |  |  | 80h | 80h |  |  |  |  |
| 3 | 1.1.1 | 组建团队 |  | 1d | 2019-09-03 A | 2019-09-04 A |  | 100% |  |  |  |  | 全体成员 | 16h | 16h |  |  | 全体成员 | 利俊安 |
| 4 | 1.1.2 | 选举项目经理 |  | 1d | 2019-09-03 A | 2019-09-04 A | 3FF | 100% |  |  |  |  | 全体成员 | 16h | 16h |  |  | 全体成员 | 利俊安 |
| 5 | 1.1.3 | 确定项目主题 |  | 1d | 2019-09-04 A | 2019-09-05 A | 3 | 100% |  |  |  |  | 全体成员 | 16h | 16h |  |  | 全体成员 | 利俊安 |
| 6 | 1.1.4 | 确定项目章程 |  | 1d | 2019-09-05 A | 2019-09-06 A | 5 | 100% |  |  |  |  | 全体成员 | 16h | 16h |  |  | 全体成员 | 利俊安 |
| 7 | 1.1.5 | 启动项目 |  | 1d | 2019-09-06 A | 2019-09-07 A | 6 | 100% |  |  |  |  | 全体成员 | 16h | 16h |  |  | 全体成员 | 利俊安 |
| 8 | 1.2 | **计划阶段** |  | 62d | 2019-09-07 A | 2019-11-15 | 2 | 85% | 9.54d | 11d |  |  |  | 208h | 176h | 6,500 | 5,000 |  |  |
| 9 | 1.2.1 | 召开团队计划会议 |  | 1d | 2019-09-07 A | 2019-09-08 A |  | 100% |  |  |  |  | 全体成员 | 16h | 16h |  |  | 全体成员 | 利俊安 |
| 10 | 1.2.2 | 准备范围说明书 |  | 2d | 2019-09-07 A | 2019-09-09 A |  | 100% |  |  |  |  | 李 | 32h | 32h | 1,250 | 1,250 | 利俊安 | 利俊安 |
| 11 | 1.2.3 | 准备WBS |  | 3d | 2019-09-07 A | 2019-09-10 A |  | 100% |  |  |  |  | 利 | 48h | 48h | 2,250 | 2,250 | 利俊安、李光耀 | 利俊安 |
| 12 | 1.2.4 | 制定计划文档 |  | 2d | 2019-09-11 A | 2019-09-13 A | 11 | 100% |  |  |  |  | 利 | 32h | 32h | 1,500 | 1,500 | 利俊安 | 利俊安 |
| 13 | 1.2.5 | 评审计划文档 |  | 1d | 2019-09-13 A | 2019-09-14 A | 12 | 100% |  |  |  |  | 全体成员 | 16h | 16h |  |  | 利俊安 | 利俊安 |
| 14 | 1.2.6 | 风险识别和讨论 |  | 2d | 2019-09-14 A | 2019-09-16 A | 13 | 100% |  |  |  |  | 全体成员 | 32h | 32h |  |  | 利俊安 | 利俊安 |
| 15 | 1.2.7 | 制定收尾计划 |  | 2d | 2019-11-13 | 2019-11-15 |  |  |  | 11d |  | start no earlier than 2019-11-13 | 利 | 32h |  | 1,500 |  | 利俊安、李光耀 | 利俊安 |
| 16 | 1.3 | 项目正式确立 | milestone | 0d | 2019-09-16 A | 2019-09-16 A | 14 | 100% |  |  |  |  |  |  |  |  |  |  |  |
| 17 | 1.4 | **执行阶段** |  | 69d | 2019-09-07 A | 2019-11-22 | 2 | 75% | 17.42d | 4d |  |  |  | 4416h | 3728h | 178,280 | 148,531.25 |  |  |
| 18 | 1.4.1 | **前期学习** |  | 34d | 2019-09-07 A | 2019-10-18 |  | 91% | 3.05d | 36d |  |  |  | 1360h | 1304h | 54,115 | 51,927.5 |  |  |
| 19 | 1.4.1.1 | 项目管理知识学习 |  | 4d | 2019-09-07 A | 2019-09-11 A |  | 100% |  |  |  |  | 利; 李 | 128h | 128h | 5,500 | 5,500 | 利俊安、李光耀 | 李光耀 |
| 20 | 1.4.1.2 | Angular学习 |  | 14d | 2019-09-07 A | 2019-09-21 A |  | 100% |  |  |  |  | 利; 邹; 张 | 672h | 672h | 26,740 | 26,740 | 利俊安、邹博韬、张景维 | 利俊安 |
| 21 | 1.4.1.3 | Django学习 |  | 14d | 2019-09-07 A | 2019-09-21 A |  | 100% |  |  |  |  | 李; 吴 | 448h | 448h | 17,500 | 17,500 | 李光耀、吴宁 | 吴宁 |
| 22 | 1.4.1.4 | Channels学习 |  | 7d | 2019-10-11 A | 2019-10-18 |  | 50% | 3.5d | 36d | 4d |  | 李 | 112h | 56h | 4,375 | 2,187.5 | 李光耀、吴宁 | 吴宁 |
| 23 | 1.4.2 | **需求分析** |  | 14d | 2019-09-16 A | 2019-09-30 A | 19, 16 | 100% |  |  |  |  |  | 592h | 592h | 25,055 | 25,055 |  |  |
| 24 | 1.4.2.1 | 功能性需求分析 |  | 3d | 2019-09-16 A | 2019-09-19 A |  | 100% |  |  |  |  | 利; 李 | 96h | 96h | 4,125 | 4,125 | 利俊安、李光耀 | 李光耀 |
| 25 | 1.4.2.2 | 非功能性需求分析 |  | 1d | 2019-09-16 A | 2019-09-17 A |  | 100% |  |  |  |  | 利 | 16h | 16h | 750 | 750 | 利俊安 | 利俊安 |
| 26 | 1.4.2.3 | 用例设计 |  | 5d | 2019-09-19 A | 2019-09-24 A | 24 | 100% |  |  |  |  | 利; 李 | 160h | 160h | 6,875 | 6,875 | 利俊安、李光耀 | 利俊安 |

| ID | WBS | Task | Duration | Start | Finish | Predecessors | Complete | Remaining | Total slack | Free slack | Resources | Work | Actual work | Cost | Actual cost | 参与人 | 负责人 |
| --- | --- | --- | --- | --- | --- | --- | --- | --- | --- | --- | --- | --- | --- | --- | --- | --- | --- |
| 27 | 1.4.2.4 | **前端原型设计** | 6d | 2019-09-24 A | 2019-09-30 A |  | 100% |  |  |  |  | 224h | 224h | 9,180 | 9,180 | 利俊安、李光耀、张景维 | 利俊安 |
| 28 | 1.4.2.4.1 | 登陆页面原型设计 | 1d | 2019-09-24 A | 2019-09-25 A | 26 | 100% |  |  |  | 利 | 16h | 16h | 750 | 750 | 利俊安、李光耀、张景维 | 利俊安 |
| 29 | 1.4.2.4.2 | 主页面原型设计 | 1d | 2019-09-25 A | 2019-09-26 A | 28 | 100% |  |  |  | 利 | 16h | 16h | 750 | 750 | 利俊安、李光耀、张景维 | 利俊安 |
| 30 | 1.4.2.4.3 | 个人页原型设计 | 2d | 2019-09-24 A | 2019-09-26 A | 26 | 100% |  |  |  | 张 | 32h | 32h | 1,200 | 1,200 | 利俊安、李光耀、张景维 | 利俊安 |
| 31 | 1.4.2.4.4 | 项目页原型设计 | 4d | 2019-09-26 A | 2019-09-30 A | 29 | 100% |  |  |  | 利 | 64h | 64h | 3,000 | 3,000 | 利俊安、李光耀、张景维 | 利俊安 |
| 32 | 1.4.2.4.5 | 聊天页原型设计 | 2d | 2019-09-26 A | 2019-09-28 A | 30 | 100% |  |  |  | 张 | 32h | 32h | 1,200 | 1,200 | 利俊安、李光耀、张景维 | 利俊安 |
| 33 | 1.4.2.4.6 | 好友页原型设计 | 3d | 2019-09-25 A | 2019-09-28 A | 26 | 100% |  |  |  | 邹 | 48h | 48h | 1,680 | 1,680 | 利俊安、李光耀、张景维 | 利俊安 |
| 34 | 1.4.2.4.7 | 通知页原型设计 | 1d | 2019-09-28 A | 2019-09-29 A | 33, 32 | 100% |  |  |  | 张 | 16h | 16h | 600 | 600 | 利俊安、李光耀、张景维 | 利俊安 |
| 35 | 1.4.2.5 | 编写需求文档 | 3d | 2019-09-24 A | 2019-09-27 A | 26 | 100% |  |  |  | 利; 李 | 96h | 96h | 4,125 | 4,125 | 利俊安、李光耀 | 利俊安 |
| 36 | 1.4.3 | 需求评审 | 1d | 2019-09-30 A | 2019-10-01 A | 23 | 100% |  |  |  | 全体成员 | 16h | 16h |  |  | 全体成员 | 吴宁 |
| 37 | 1.4.4 | **概要设计** | 9d | 2019-10-08 A | 2019-10-17 A | 36 | 100% |  |  |  |  | 288h | 288h | 12,750 | 12,750 |  |  |
| 38 | 1.4.4.1 | 系统架构设计 | 3d | 2019-10-08 A | 2019-10-11 A |  | 100% |  |  |  | 利 | 48h | 48h | 2,250 | 2,250 | 利俊安 | 利俊安 |
| 39 | 1.4.4.2 | 后台模块设计 | 2d | 2019-10-08 A | 2019-10-10 A |  | 100% |  |  |  | 利 | 32h | 32h | 1,500 | 1,500 | 利俊安 | 利俊安 |
| 40 | 1.4.4.3 | 数据模型设计 | 3d | 2019-10-10 A | 2019-10-13 A | 39 | 100% |  |  |  | 利; 李; 吴 | 144h | 144h | 6,000 | 6,000 | 利俊安、李光耀、吴宁 | 利俊安 |
| 41 | 1.4.4.4 | 数据库设计 | 4d | 2019-10-13 A | 2019-10-17 A | 40 | 100% |  |  |  | 利 | 64h | 64h | 3,000 | 3,000 | 利俊安、李光耀、吴宁 | 利俊安 |
| 42 | 1.4.5 | 概要设计评审 | 1d | 2019-10-17 A | 2019-10-18 A | 41 | 100% |  |  |  | 全体成员 | 16h | 16h |  |  | 全体成员 | 利俊安 |
| 43 | 1.4.6 | **详细设计** | 19d | 2019-10-08 A | 2019-10-27 |  | 88% | 2.31d | 30d |  |  | 624h | 552h | 24,905 | 21,530 |  |  |
| 44 | 1.4.6.1 | **前后端接口设计** | 8d | 2019-10-08 A | 2019-10-16 |  | 59% | 3.27d | 41d |  |  | 176h | 104h | 7,500 | 4,125 | 利俊安、吴宁 | 利俊安 |
| 45 | 1.4.6.1.1 | 用户模块接口 | 2d | 2019-10-08 A | 2019-10-10 A | 36 | 100% |  |  |  | 吴 | 32h | 32h | 1,250 | 1,250 | 利俊安、吴宁 | 利俊安 |
| 46 | 1.4.6.1.2 | 项目模块接口 | 2d | 2019-10-10 A | 2019-10-12 A | 45 | 100% |  |  |  | 吴 | 32h | 32h | 1,250 | 1,250 | 利俊安、吴宁 | 利俊安 |
| 47 | 1.4.6.1.3 | 任务模块接口 | 2d | 2019-10-12 A | 2019-10-14 A | 46 | 100% |  |  |  | 吴 | 32h | 32h | 1,250 | 1,250 | 利俊安、吴宁 | 利俊安 |
| 48 | 1.4.6.1.4 | 聊天模块接口 | 3d | 2019-10-08 | 2019-10-11 | 36 |  |  | 3.5d | 3d | 利 | 48h |  | 2,250 |  | 利俊安、吴宁 | 利俊安 |
| 49 | 1.4.6.1.5 | 接口评审 | 2d | 2019-10-14 A | 2019-10-16 | 47, 48 | 25% | 1.5d | 41d |  | 利 | 32h | 8h | 1,500 | 375 | 利俊安、吴宁 | 利俊安 |
| 50 | 1.4.6.2 | **对象模型设计** | 2d | 2019-10-17 A | 2019-10-19 A |  | 100% |  |  |  |  | 80h | 80h | 3,250 | 3,250 | 利俊安 | 利俊安 |
| 51 | 1.4.6.2.1 | 前端对象模型 | 1d | 2019-10-17 A | 2019-10-18 A | 49SS+3d | 100% |  |  |  | 利 | 16h | 16h | 750 | 750 | 利俊安 | 利俊安 |
| 52 | 1.4.6.2.2 | 后台对象模型 | 2d | 2019-10-17 A | 2019-10-19 A | 49SS+3d | 100% |  |  |  | 吴; 李 | 64h | 64h | 2,500 | 2,500 | 利俊安 | 利俊安 |

| ID | WBS | Task | Type | Duration | Start | Finish | Predecessors | Complete | Remaining | Total slack | Resources | Work | Actual work | Cost | Actual cost | 参与人 | 负责人 |
| --- | --- | --- | --- | --- | --- | --- | --- | --- | --- | --- | --- | --- | --- | --- | --- | --- | --- |
| 53 | 1.4.6.3 | **用例实现设计** |  | 7d | 2019-10-19 A | 2019-10-26 A |  | 100% |  |  |  | 352h | 352h | 13,405 | 13,405 | 利俊安、李光耀 | 利俊安 |
| 54 | 1.4.6.3.1 | **用户模块用例实现** |  | 4d | 2019-10-19 A | 2019-10-23 A |  | 100% |  |  |  | 112h | 112h | 3,685 | 3,685 | 利俊安、李光耀 | 利俊安 |
| 55 | 1.4.6.3.1.1 | 用例 1 2 3（前端） |  | 2d | 2019-10-19 A | 2019-10-21 A | 51, 52 | 100% |  |  | 曾 | 32h | 32h | 650 | 650 | 利俊安、李光耀 | 利俊安 |
| 56 | 1.4.6.3.1.2 | 用例 4 5（前端） |  | 1d | 2019-10-19 A | 2019-10-20 A | 51, 52 | 100% |  |  | 张 | 16h | 16h | 600 | 600 | 利俊安、李光耀 | 利俊安 |
| 57 | 1.4.6.3.1.3 | 用例 1~5（后端） |  | 2d | 2019-10-21 A | 2019-10-23 A | 55, 56, 59 | 100% |  |  | 吴 | 32h | 32h | 1,250 | 1,250 | 利俊安、李光耀 | 利俊安 |
| 58 | 1.4.6.3.1.4 | 用例 6 7（前端） |  | 1d | 2019-10-19 A | 2019-10-20 A | 51, 52 | 100% |  |  | 邹 | 16h | 16h | 560 | 560 | 利俊安、李光耀 | 利俊安 |
| 59 | 1.4.6.3.1.5 | 用例 6 7（后端） |  | 1d | 2019-10-20 A | 2019-10-21 A | 58 | 100% |  |  | 吴 | 16h | 16h | 625 | 625 | 利俊安、李光耀 | 利俊安 |
| 60 | 1.4.6.3.2 | **项目模块用例实现** |  | 4d | 2019-10-19 A | 2019-10-23 A |  | 100% |  |  |  | 64h | 64h | 2,620 | 2,620 | 利俊安、李光耀 | 利俊安 |
| 61 | 1.4.6.3.2.1 | 用例 1~6 9 |  | 1d | 2019-10-19 A | 2019-10-20 A | 51, 52 | 100% |  |  | 利 | 16h | 16h | 750 | 750 | 利俊安、李光耀 | 利俊安 |
| 62 | 1.4.6.3.2.2 | 用例 7 8 10（后端） |  | 1d | 2019-10-20 A | 2019-10-21 A | 61 | 100% |  |  | 利 | 16h | 16h | 750 | 750 | 利俊安、李光耀 | 利俊安 |
| 63 | 1.4.6.3.2.3 | 用例 7 8 10（前端） |  | 2d | 2019-10-21 A | 2019-10-23 A | 62 | 100% |  |  | 邹 | 32h | 32h | 1,120 | 1,120 | 利俊安、李光耀 | 利俊安 |
| 64 | 1.4.6.3.3 | **任务模块用例实现** |  | 6d | 2019-10-19 A | 2019-10-25 A |  | 100% |  |  |  | 112h | 112h | 4,500 | 4,500 | 利俊安、李光耀 | 利俊安 |
| 65 | 1.4.6.3.3.1 | 用例 1~6 |  | 6d | 2019-10-19 A | 2019-10-25 A | 51, 52 | 100% |  |  | 李 | 96h | 96h | 3,750 | 3,750 | 利俊安、李光耀 | 利俊安 |
| 66 | 1.4.6.3.3.2 | 用例 7 8 |  | 1d | 2019-10-21 A | 2019-10-22 A | 62 | 100% |  |  | 利 | 16h | 16h | 750 | 750 | 利俊安、李光耀 | 利俊安 |
| 67 | 1.4.6.3.4 | **聊天模块用例实现** |  | 3d | 2019-10-19 A | 2019-10-22 A |  | 100% |  |  |  | 48h | 48h | 1,850 | 1,850 | 利俊安、李光耀 | 利俊安 |
| 68 | 1.4.6.3.4.1 | 用例 1~3（后端） |  | 2d | 2019-10-19 A | 2019-10-21 A | 51, 52 | 100% |  |  | 李 | 32h | 32h | 1,250 | 1,250 | 利俊安、李光耀 | 利俊安 |
| 69 | 1.4.6.3.4.2 | 用例 1~3（前端） |  | 1d | 2019-10-21 A | 2019-10-22 A | 56, 68 | 100% |  |  | 张 | 16h | 16h | 600 | 600 | 利俊安、李光耀 | 利俊安 |
| 70 | 1.4.6.3.5 | 用例实现评审 |  | 1d | 2019-10-25 A | 2019-10-26 A | 54, 60, 64, 67 | 100% |  |  | 利 | 16h | 16h | 750 | 750 | 利俊安、李光耀 | 利俊安 |
| 71 | 1.4.6.4 | 编写详细设计文档 |  | 1d | 2019-10-26 A | 2019-10-27 A | 70 | 100% |  |  | 利 | 16h | 16h | 750 | 750 | 利俊安、李光耀 | 利俊安 |
| 72 | 1.4.7 | 详细设计评审 |  | 1d | 2019-10-27 A | 2019-10-28 A | 71 | 100% |  |  | 全体成员 | 16h | 16h |  |  | 全体成员 | 利俊安 |
| 73 | 1.4.8 | 完成系统设计 | milestone | 0d | 2019-10-28 | 2019-10-28 | 72 |  |  | 25d |  |  |  |  |  |  |  |
| 74 | 1.4.9 | **编码开发** |  | 41d | 2019-10-12 A | 2019-11-22 |  | 64% | 14.64d | 4d |  | 1504h | 944h | 61,455 | 37,268.75 |  |  |
| 75 | 1.4.9.1 | **前端开发** |  | 19d | 2019-10-12 A | 2019-10-31 |  | 53% | 8.89d | 26d |  | 896h | 456h | 38,180 | 19,087.5 |  |  |
| 76 | 1.4.9.1.1 | **前端组件开发** |  | 18d | 2019-10-12 A | 2019-10-30 |  | 84% | 2.92d | 27d |  | 448h | 356h | 19,070 | 14,900 | 利俊安、邹博韬、张景维 | 利俊安 |
| 77 | 1.4.9.1.1.1 | 登陆界面组件 |  | 1d | 2019-10-12 A | 2019-10-13 A |  | 100% |  |  | 利 | 16h | 16h | 750 | 750 | 利俊安、邹博韬、张景维 | 利俊安 |
| 78 | 1.4.9.1.1.2 | 个人界面组件 |  | 1d | 2019-10-12 A | 2019-10-13 A |  | 100% |  |  | 张 | 16h | 16h | 600 | 600 | 利俊安、邹博韬、张景维 | 利俊安 |
| 79 | 1.4.9.1.1.3 | 好友界面组件 |  | 4d | 2019-10-12 A | 2019-10-16 A |  | 100% |  |  | 邹 | 64h | 64h | 2,240 | 2,240 | 利俊安、邹博韬、张景维 | 利俊安 |

Notes:
- 55: 登陆注册功能
- 56: 用户修改功能
- 57: 用户基本功能
- 58: 好友功能
- 59: 好友功能
- 61: 项目基本功能
- 62: 项目通知功能
- 63: 项目通知功能
- 65: 任务基本功能
- 66: 任务修改功能
- 68: 聊天基本功能
- 69: 聊天基本功能

| ID | WBS | Task | Duration | Start | Finish | Predecessors | Complete | Remaining | Total slack | Free slack | Resources | Work | Actual work | Cost | Actual cost | 参与人 | 负责人 |
| --- | --- | --- | --- | --- | --- | --- | --- | --- | --- | --- | --- | --- | --- | --- | --- | --- | --- |
| 80 | 1.4.9.1.1.4 | **项目界面组件** | 8d | 2019-10-22 A | 2019-10-30 | 66 | 69% | 2.5d | 27d |  | 利 | 256h | 176h | 12,000 | 8,250 | 利俊安、邹博韬、张景维 | 利俊安 |
| 81 | 1.4.9.1.1.4.1 | 项目详情 | 1d | 2019-10-22 A | 2019-10-23 A | 66 | 100% |  |  |  | 利 | 16h | 16h | 750 | 750 | 利俊安、邹博韬、张景维 | 利俊安 |
| 82 | 1.4.9.1.1.4.2 | 修改项目 | 1d | 2019-10-23 A | 2019-10-24 A | 81 | 100% |  |  |  | 利 | 16h | 16h | 750 | 750 | 利俊安、邹博韬、张景维 | 利俊安 |
| 83 | 1.4.9.1.1.4.3 | 成员视图 | 2d | 2019-10-24 A | 2019-10-26 A | 82 | 100% |  |  |  | 利 | 32h | 32h | 1,500 | 1,500 | 利俊安、邹博韬、张景维 | 利俊安 |
| 84 | 1.4.9.1.1.4.4 | 任务视图 | 2d | 2019-10-26 A | 2019-10-28 | 83 | 75% | 0.5d | 27d | 0d | 利 | 32h | 24h | 1,500 | 1,125 | 利俊安、邹博韬、张景维 | 利俊安 |
| 85 | 1.4.9.1.1.4.5 | 时间视图 | 2d | 2019-10-28 | 2019-10-30 | 84 |  |  | 27d |  | 利 | 32h |  | 1,500 |  | 利俊安、邹博韬、张景维 | 利俊安 |
| 86 | 1.4.9.1.1.5 | 通知界面组件 | 3d | 2019-10-16 A | 2019-10-19 | 79 | 75% | 0.75d | 38d |  | 邹 | 48h | 36h | 1,680 | 1,260 | 利俊安、邹博韬、张景维 | 利俊安 |
| 87 | 1.4.9.1.1.6 | 聊天界面组件 | 3d | 2019-10-13 A | 2019-10-16 A | 78 | 100% |  |  |  | 张 | 48h | 48h | 1,800 | 1,800 | 利俊安、邹博韬、张景维 | 利俊安 |
| 88 | 1.4.9.1.2 | **前端逻辑开发** | 9d | 2019-10-22 A | 2019-10-31 |  | 21% | 7.11d | 26d |  |  | 448h | 100h | 19,110 | 4,187.5 | 利俊安、邹博韬、张景维 | 利俊安 |
| 89 | 1.4.9.1.2.1 | 登录界面逻辑 | 1d | 2019-10-23 A | 2019-10-24 | 54 | 50% | 0.5d | 1d |  | 利 | 16h | 8h | 750 | 375 | 利俊安、邹博韬、张景维 | 利俊安 |
| 90 | 1.4.9.1.2.2 | 个人界面逻辑 | 2d | 2019-10-23 A | 2019-10-25 | 54 | 38% | 1.25d | 32d |  | 张 | 32h | 12h | 1,200 | 450 | 利俊安、邹博韬、张景维 | 利俊安 |
| 91 | 1.4.9.1.2.3 | 好友界面逻辑 | 3d | 2019-10-23 A | 2019-10-26 | 54 | 17% | 2.5d | 0.75d | 0d | 邹 | 48h | 8h | 1,680 | 280 | 利俊安、邹博韬、张景维 | 利俊安 |
| 92 | 1.4.9.1.2.4 | **项目界面逻辑** | 6d | 2019-10-25 A | 2019-10-31 | 64, 89, 60 | 7% | 5.57d | 26d |  | 利 | 208h | 28h | 9,750 | 1,312.5 | 利俊安、邹博韬、张景维 | 利俊安 |
| 93 | 1.4.9.1.2.4.1 | 项目详情 | 1d | 2019-10-25 A | 2019-10-26 | 64, 89, 60 | 50% | 0.5d | 31d | 0d | 利 | 16h | 8h | 750 | 375 | 利俊安、邹博韬、张景维 | 利俊安 |
| 94 | 1.4.9.1.2.4.2 | 修改项目 | 1d | 2019-10-25 | 2019-10-26 | 93SS |  |  | 26d | 0d | 利 | 16h |  | 750 |  | 利俊安、邹博韬、张景维 | 利俊安 |
| 95 | 1.4.9.1.2.4.3 | 成员视图 | 2d | 2019-10-26 | 2019-10-28 | 94 |  |  | 26d | 0d | 利 | 32h |  | 1,500 |  | 利俊安、邹博韬、张景维 | 利俊安 |
| 96 | 1.4.9.1.2.4.4 | 任务视图 | 2d | 2019-10-28 | 2019-10-30 | 95 |  |  | 26d | 0d | 利 | 32h |  | 1,500 |  | 利俊安、邹博韬、张景维 | 利俊安 |
| 97 | 1.4.9.1.2.4.5 | 时间视图 | 1d | 2019-10-30 | 2019-10-31 | 96 |  |  | 26d |  | 利 | 16h |  | 750 |  | 利俊安、邹博韬、张景维 | 利俊安 |
| 98 | 1.4.9.1.2.5 | 通知界面逻辑 | 3d | 2019-10-26 A | 2019-10-29 | 60, 91 | 25% | 2.25d | 28d |  | 邹 | 48h | 12h | 1,680 | 420 | 利俊安、邹博韬、张景维 | 利俊安 |
| 99 | 1.4.9.1.2.6 | 聊天界面逻辑 | 3d | 2019-10-22 A | 2019-10-25 | 67 | 33% | 2d | 32d |  | 张; 利 | 96h | 32h | 4,050 | 1,350 | 利俊安、邹博韬、张景维 | 利俊安 |
| 100 | 1.4.9.2 | **后台开发** | 34d | 2019-10-19 A | 2019-11-22 |  | 82% | 6.02d | 4d |  |  | 608h | 488h | 23,275 | 18,181.25 |  |  |
| 101 | 1.4.9.2.1 | 后台模型开发 | 3d | 2019-10-19 A | 2019-10-22 | 52 | 75% | 0.75d | 2.5d | 0d | 利; 吴 | 96h | 72h | 4,125 | 3,093.75 | 利俊安、吴宁 | 利俊安 |
| 102 | 1.4.9.2.2 | **后台逻辑开发** | 6d | 2019-10-22 A | 2019-10-28 |  | 72% | 1.67d | 29d |  |  | 208h | 128h | 9,250 | 5,812.5 | 利俊安、李光耀、吴宁 | 利俊安 |
| 103 | 1.4.9.2.2.1 | 用户模块逻辑 | 2d | 2019-10-23 A | 2019-10-25 | 101, 54 | 75% | 0.5d | 32d |  | 利; 吴 | 64h | 48h | 2,750 | 2,062.5 | 利俊安、李光耀、吴宁 | 利俊安 |
| 104 | 1.4.9.2.2.2 | 项目模块逻辑 | 2d | 2019-10-25 A | 2019-10-27 A | 103, 60 | 100% |  |  |  | 利 | 32h | 32h | 1,500 | 1,500 | 利俊安、李光耀、吴宁 | 利俊安 |
| 105 | 1.4.9.2.2.3 | 任务模块逻辑 | 3d | 2019-10-25 A | 2019-10-28 A | 103, 64 | 100% |  |  |  | 利 | 48h | 48h | 2,250 | 2,250 | 利俊安、李光耀、吴宁 | 利俊安 |
| 106 | 1.4.9.2.2.4 | 聊天模块逻辑 | 2d | 2019-10-22 | 2019-10-24 | 22, 101, 67 |  |  | 21d | 0d | 利; 李 | 64h |  | 2,750 |  | 利俊安、李光耀、吴宁 | 利俊安 |

| ID | WBS | Task | Type | Duration | Start | Finish | Predecessors | Complete | Remaining | Total slack | Constraint | Resources | Work | Actual work | Cost | Actual cost | 参与人 | 负责人 |
| --- | --- | --- | --- | --- | --- | --- | --- | --- | --- | --- | --- | --- | --- | --- | --- | --- | --- | --- |
| 107 | 1.4.9.2.3 | **后台接口开发** |  | 5d | 2019-10-24 A | 2019-10-29 |  | 80% | 1d | 28d |  |  | 80h | 64h | 3,250 | 2,625 | 利俊安、李光耀、吴宁 | 利俊安 |
| 108 | 1.4.9.2.3.1 | 用户模块接口 |  | 1d | 2019-10-25 A | 2019-10-26 A | 103 | 100% |  |  |  | 吴 | 16h | 16h | 625 | 625 | 利俊安、李光耀、吴宁 | 利俊安 |
| 109 | 1.4.9.2.3.2 | 项目模块接口 |  | 2d | 2019-10-27 A | 2019-10-29 A | 104 | 100% |  |  |  | 吴 | 32h | 32h | 1,250 | 1,250 | 利俊安、李光耀、吴宁 | 利俊安 |
| 110 | 1.4.9.2.3.3 | 任务模块接口 |  | 1d | 2019-10-28 A | 2019-10-29 A | 105 | 100% |  |  |  | 利 | 16h | 16h | 750 | 750 | 利俊安、李光耀、吴宁 | 利俊安 |
| 111 | 1.4.9.2.3.4 | 聊天模块接口 |  | 1d | 2019-10-24 | 2019-10-25 | 106 |  |  | 21d |  | 李 | 16h |  | 625 |  | 利俊安、李光耀、吴宁 | 利俊安 |
| 112 | 1.4.9.2.4 | 后台单元测试 |  | 7d | 2019-11-15 A | 2019-11-22 A | 15, 107 | 100% |  |  |  | 曾; 吴 | 224h | 224h | 6,650 | 6,650 |  |  |
| 113 | 1.4.10 | **监督控制阶段** |  | 43d | 2019-09-08 A | 2019-10-28 |  |  | 43d | 29d |  |  |  |  |  |  |  |  |
| 114 | 1.4.10.1 | **进度报告** |  | 36d | 2019-09-08 A | 2019-10-21 |  |  | 36d | 0d |  |  |  |  |  |  |  |  |
| 115 | 1.4.10.1.1 | 学习进度报告 1 | manual | 1d | 2019-09-08 A | 2019-09-09 |  |  | 1d |  | start no earlier than 2019-09-08 |  |  |  |  |  | 全体成员 | 利俊安 |
| 116 | 1.4.10.1.2 | 学习进度报告 2 | manual | 1d | 2019-09-12 A | 2019-09-13 |  |  | 1d |  | start no earlier than 2019-09-12 |  |  |  |  |  | 全体成员 | 利俊安 |
| 117 | 1.4.10.1.3 | 学习进度报告 3 | manual | 1d | 2019-09-14 A | 2019-09-15 |  |  | 1d |  | start no earlier than 2019-09-14 |  |  |  |  |  | 全体成员 | 利俊安 |
| 118 | 1.4.10.1.4 | 学习进度报告 4 | manual | 1d | 2019-09-19 A | 2019-09-20 |  |  | 1d |  | start no earlier than 2019-09-19 |  |  |  |  |  | 全体成员 | 利俊安 |
| 119 | 1.4.10.1.5 | 设计进度报告 1 | manual | 1d | 2019-09-21 A | 2019-09-22 |  |  | 1d |  | start no earlier than 2019-09-21 |  |  |  |  |  | 全体成员 | 利俊安 |
| 120 | 1.4.10.1.6 | 设计进度报告 2 | manual | 1d | 2019-09-24 A | 2019-09-25 |  |  | 1d |  | start no earlier than 2019-09-24 |  |  |  |  |  | 全体成员 | 利俊安 |
| 121 | 1.4.10.1.7 | 设计进度报告 3 | manual | 1d | 2019-09-27 A | 2019-09-28 |  |  | 1d |  | start no earlier than 2019-09-27 |  |  |  |  |  | 全体成员 | 利俊安 |
| 122 | 1.4.10.1.8 | 开发进度报告 1 | manual | 1d | 2019-09-30 A | 2019-10-01 |  |  | 1d |  | start no earlier than 2019-09-30 |  |  |  |  |  | 全体成员 | 利俊安 |
| 123 | 1.4.10.1.9 | 开发进度报告 2 | manual | 1d | 2019-10-03 A | 2019-10-04 |  |  | 1d |  | start no earlier than 2019-10-03 |  |  |  |  |  | 全体成员 | 利俊安 |
| 124 | 1.4.10.1.10 | 开发进度报告 3 | manual | 1d | 2019-10-05 A | 2019-10-06 |  |  | 1d |  | start no earlier than 2019-10-05 |  |  |  |  |  | 全体成员 | 利俊安 |
| 125 | 1.4.10.1.11 | 开发进度报告 4 | manual | 1d | 2019-10-10 A | 2019-10-11 |  |  | 1d |  | start no earlier than 2019-10-10 |  |  |  |  |  | 全体成员 | 利俊安 |
| 126 | 1.4.10.1.12 | 开发进度报告 5 | manual | 1d | 2019-10-14 A | 2019-10-15 |  |  | 1d |  | start no earlier than 2019-10-14 |  |  |  |  |  | 全体成员 | 利俊安 |
| 127 | 1.4.10.1.13 | 测试进度报告 1 | manual | 1d | 2019-10-16 A | 2019-10-17 |  |  | 1d |  | start no earlier than 2019-10-16 |  |  |  |  |  | 全体成员 | 利俊安 |
| 128 | 1.4.10.1.14 | 测试进度报告 2 | manual | 1d | 2019-10-18 A | 2019-10-19 |  |  | 1d |  | start no earlier than 2019-10-18 |  |  |  |  |  | 全体成员 | 利俊安 |
| 129 | 1.4.10.1.15 | 测试进度报告 3 | manual | 1d | 2019-10-20 A | 2019-10-21 |  |  | 1d |  | start no earlier than 2019-10-20 |  |  |  |  |  | 全体成员 | 利俊安 |
| 130 | 1.4.10.2 | **例会** |  | 18d | 2019-09-09 A | 2019-09-27 |  |  | 18d | 0d |  |  |  |  |  |  |  |  |
| 131 | 1.4.10.2.1 | 需求分析会议 | manual | 1d | 2019-09-09 A | 2019-09-10 |  |  | 1d |  | start no earlier than 2019-09-09 |  |  |  |  |  | 全体成员 | 利俊安 |
| 132 | 1.4.10.2.2 | 数据模型设计会议 | manual | 1d | 2019-09-15 A | 2019-09-16 |  |  | 1d |  | start no earlier than 2019-09-15 |  |  |  |  |  | 利俊安、李光耀、吴宁 | 利俊安 |
| 133 | 1.4.10.2.3 | 原型设计会议 | manual | 1d | 2019-09-19 A | 2019-09-20 |  |  | 1d |  | start no earlier than 2019-09-19 |  |  |  |  |  | 利俊安、李光耀、张景维 | 利俊安 |
| 134 | 1.4.10.2.4 | 组件设计会议 | manual | 1d | 2019-09-22 A | 2019-09-23 |  |  | 1d |  | start no earlier than 2019-09-22 |  |  |  |  |  | 利俊安、张景维、邹博韬 | 利俊安 |
| 135 | 1.4.10.2.5 | 开发培训会议 | manual | 1d | 2019-09-26 A | 2019-09-27 |  |  | 1d |  | start no earlier than 2019-09-26 |  |  |  |  |  | 全体成员 | 利俊安 |
| 136 | 1.4.10.3 | 开发终止 | milestone | 0d | 2019-10-28 | 2019-10-28 |  |  |  | 29d | start no earlier than 2019-10-28 |  |  |  |  |  |  |  |

| ID | WBS | Task | Type | Duration | Start | Finish | Predecessors | Complete | Remaining | Total slack | Constraint | Resources | Work | Actual work | Cost | Actual cost | 参与人 | 负责人 |
| --- | --- | --- | --- | --- | --- | --- | --- | --- | --- | --- | --- | --- | --- | --- | --- | --- | --- | --- |
| 137 | 1.5 | **收尾阶段** |  | 7d | 2019-11-19 A | 2019-11-26 A | 15 | 100% |  |  |  |  | 368h | 368h | 13,740 | 13,740 |  |  |
| 138 | 1.5.1 | 编写用户手册 |  | 4d | 2019-11-19 A | 2019-11-23 A | 15FS+4d | 100% |  |  |  | 李; 邹 | 128h | 128h | 4,740 | 4,740 | 利俊安、李光耀 | 利俊安 |
| 139 | 1.5.2 | 编写结题报告 |  | 4d | 2019-11-21 A | 2019-11-25 A | 138SS+2d | 100% |  |  |  | 利; 张 | 128h | 128h | 5,400 | 5,400 | 利俊安、李光耀 | 利俊安 |
| 140 | 1.5.3 | 编写测试报告 |  | 3d | 2019-11-22 A | 2019-11-25 A | 112 | 100% |  |  |  | 曾; 吴 | 96h | 96h | 2,850 | 2,850 | 利俊安、李光耀 | 利俊安 |
| 141 | 1.5.4 | 整理交付资料 |  | 1d | 2019-11-25 A | 2019-11-26 A | 138, 139, 140 | 100% |  |  |  | 利 | 16h | 16h | 750 | 750 | 利俊安 | 利俊安 |
| 142 | 2 | **其他** |  | 51d | 2019-09-17 A | 2019-11-14 |  |  | 51d | 12d |  |  |  |  |  |  |  |  |
| 143 | 2.1 | 国庆放假 | manual | 1d | 2019-10-01 A | 2019-10-07 |  |  | 1d |  | start no earlier than 2019-10-01 |  |  |  |  |  |  |  |
| 144 | 2.2 | 开题汇报 | manual | 2d | 2019-09-17 A | 2019-09-19 |  |  | 2d |  |  |  |  |  |  |  |  |  |
| 145 | 2.3 | 阶段检查 | manual | 2d | 2019-09-24 A | 2019-09-26 |  |  | 2d |  |  |  |  |  |  |  |  |  |
| 146 | 2.4 | 阶段检查 | manual | 2d | 2019-10-08 A | 2019-10-10 |  |  | 2d |  |  |  |  |  |  |  |  |  |
| 147 | 2.5 | 阶段检查 | manual | 2d | 2019-10-15 A | 2019-10-17 |  |  | 2d |  |  |  |  |  |  |  |  |  |
| 148 | 2.6 | 阶段检查 | manual | 2d | 2019-10-22 A | 2019-10-24 |  |  | 2d |  |  |  |  |  |  |  |  |  |
| 149 | 2.7 | 阶段检查 | manual | 2d | 2019-10-29 A | 2019-10-31 |  |  | 2d |  |  |  |  |  |  |  |  |  |
| 150 | 2.8 | 结题汇报 | manual | 2d | 2019-11-05 A | 2019-11-07 |  |  | 2d |  |  |  |  |  |  |  |  |  |
| 151 | 2.9 | 结题汇报 |  | 2d | 2019-11-12 A | 2019-11-14 |  |  | 2d | 12d |  |  |  |  |  |  |  |  |

Notes:
- 143: 国庆放假，时间自由分配
